# Alert System

Schedule from MS Project, 2011-10-03 to 2012-03-06, A marks actual dates.

## Calendars

- Standard: Mon-Fri 08:00-12:00, 13:00-17:00; Sat-Sun off.

## Resources

| Resource |
| --- |
| Alex |
| Shevys |
| Tester |
| Developers |
| Lightmoon |
| Sky_cat |

## Schedule

| ID | WBS | Task | Duration | Start | Finish | Predecessors | Complete | Remaining | Total slack | Free slack | Resources | Work | Actual work |
| --- | --- | --- | --- | --- | --- | --- | --- | --- | --- | --- | --- | --- | --- |
| 1 | 1 | **All development** | 112d | 2011-10-03 A | 2012-03-06 |  | 5% | 106.43d | 0d |  |  | 1998h | 104.92h |
| 2 | 1.1 | Create branch | 1d | 2011-10-03 | 2011-10-03 |  |  |  | 3.6d | 0d | Alex; Shevys | 16h |  |
| 3 | 1.2 | **Create test documentations** | 4.69d | 2011-10-03 A | 2011-10-07 |  | 65% | 1.62d | 107.31d |  | Tester | 75h | 49h |
| 4 | 1.2.1 | User permissions | 1h | 2011-10-03 A | 2011-10-03 A |  | 100% |  |  |  | Lightmoon | 1h | 1h |
| 5 | 1.2.2 | **Alert Management** | 0.69d | 2011-10-03 A | 2011-10-03 A | 4 | 100% |  |  |  |  | 5.5h | 5.5h |
| 6 | 1.2.2.1 | Adding Alerts | 2.5h | 2011-10-03 A | 2011-10-03 A |  | 100% |  |  |  | Lightmoon | 2.5h | 2.5h |
| 7 | 1.2.2.2 | Editing Alerts | 1.5h | 2011-10-03 A | 2011-10-03 A | 6 | 100% |  |  |  | Lightmoon | 1.5h | 1.5h |
| 8 | 1.2.2.3 | Deleting Alerts | 1.5h | 2011-10-03 A | 2011-10-03 A | 7 | 100% |  |  |  | Lightmoon | 1.5h | 1.5h |
| 9 | 1.2.3 | **Rule-Alert Interaction** | 0.56d | 2011-10-03 A | 2011-10-04 A | 5 | 100% |  |  |  |  | 4.5h | 4.5h |
| 10 | 1.2.3.1 | Assigning Alert to the rules | 3h | 2011-10-03 A | 2011-10-04 A |  | 100% |  |  |  | Lightmoon | 3h | 3h |
| 11 | 1.2.3.2 | Unassigning alerts | 1.5h | 2011-10-04 A | 2011-10-04 A | 10 | 100% |  |  |  | Lightmoon | 1.5h | 1.5h |
| 12 | 1.2.4 | **Actions** | 0.94d | 2011-10-04 A | 2011-10-05 A | 9 | 100% |  |  |  |  | 7.5h | 7.5h |
| 13 | 1.2.4.1 | Marking as Alert in the Database | 1h | 2011-10-04 A | 2011-10-04 A |  | 100% |  |  |  | Lightmoon | 1h | 1h |
| 14 | 1.2.4.2 | Notification - Email, Tray, Sound | 2h | 2011-10-04 A | 2011-10-04 A | 13 | 100% |  |  |  | Lightmoon | 2h | 2h |
| 15 | 1.2.4.3 | Snapshots | 0.5h | 2011-10-04 A | 2011-10-04 A | 14 | 100% |  |  |  | Lightmoon | 0.5h | 0.5h |
| 16 | 1.2.4.4 | Captain's options | 2h | 2011-10-04 A | 2011-10-05 A | 15 | 100% |  |  |  | Lightmoon | 2h | 2h |
| 17 | 1.2.4.5 | Alert report | 2h | 2011-10-05 A | 2011-10-05 A | 16 | 100% |  |  |  | Lightmoon | 2h | 2h |
| 18 | 1.2.5 | Use cases | 6h | 2011-10-05 A | 2011-10-06 A | 12 | 100% |  |  |  | Lightmoon | 6h | 6h |
| 19 | 1.2.6 | Review | 4h | 2011-10-06 | 2011-10-06 | 18 |  |  | 107.31d | 0d | Sky_cat | 4h |  |
| 20 | 1.2.7 | Correction after review | 6h | 2011-10-06 | 2011-10-07 | 19 |  |  | 107.31d | 0d | Lightmoon | 6h |  |
| 21 | 1.2.8 | Create test sets and set priorities | 3h | 2011-10-07 | 2011-10-07 | 20 |  |  | 107.31d |  | Lightmoon | 3h |  |
| 22 | 1.3 | **Main impl** | 67d | 2011-10-04 A | 2012-01-04 | 2 | 5% | 63.4d | 0d |  |  | 1040h | 55.92h |
| 23 | 1.3.1 | **Database** | 17d | 2011-10-04 | 2011-10-26 |  |  |  | 0d |  | Shevys | 136h |  |
| 24 | 1.3.1.1 | **scripts** | 13d | 2011-10-04 | 2011-10-20 |  |  |  | 0d |  |  |  |  |
| 25 | 1.3.1.1.1 | New tables | 3d | 2011-10-04 | 2011-10-06 |  |  |  | 0d |  |  |  |  |

Notes:
- 2: Here I going to prepear implementation. Create branch and build version from it.
- 4: 2 теста на фичу + изменения в существующие тесты
- 6: Addind alerts by different methods / Alerts properties / Add new Alert wizard - settings and rules tab
- 7: Editing Alerts by different methods / Edit properties, settings, assigned rules
- 9: Assigning Alert to the rules through Alert wizard / Assigning Alert to the rule through Rule Editing / Unassigning alert
- 11: Deleting Alerts by different methods / Delete alerts with monitored data associated with them / Check alerts data after deleting alerts
- 25: New tables and relations will be designed here. It will be implemented here as well

| ID | WBS | Task | Duration | Start | Finish | Predecessors | Total slack | Resources | Work |
| --- | --- | --- | --- | --- | --- | --- | --- | --- | --- |
| 26 | 1.3.1.1.2 | **Stored procedures** | 10d | 2011-10-07 | 2011-10-20 | 25 | 0d |  |  |
| 27 | 1.3.1.1.2.1 | Add/edit/delete | 3d | 2011-10-07 | 2011-10-11 |  | 0d |  |  |
| 28 | 1.3.1.1.2.2 | Reports | 3d | 2011-10-12 | 2011-10-14 | 27 | 0d |  |  |
| 29 | 1.3.1.1.2.3 | Settings | 2d | 2011-10-17 | 2011-10-18 | 28 | 0d |  |  |
| 30 | 1.3.1.1.2.4 | Audit report logging | 2d | 2011-10-19 | 2011-10-20 | 29 | 0d |  |  |
| 31 | 1.3.1.2 | **Update** | 4d | 2011-10-21 | 2011-10-26 | 24 | 0d |  |  |
| 32 | 1.3.1.2.1 | New tables | 3d | 2011-10-21 | 2011-10-25 |  | 0d |  |  |
| 33 | 1.3.1.2.2 | Security | 1d | 2011-10-26 | 2011-10-26 | 32 | 0d |  |  |
| 34 | 1.3.2 | **Captain** | 50d | 2011-10-27 | 2012-01-04 | 23 | 0d | Shevys | 400h |
| 35 | 1.3.2.1 | **Create Alert Node** | 5d | 2011-10-27 | 2011-11-02 |  | 0d |  |  |
| 36 | 1.3.2.1.1 | GUI node | 2d | 2011-10-27 | 2011-10-28 |  | 0d |  |  |
| 37 | 1.3.2.1.2 | Model node | 3d | 2011-10-31 | 2011-11-02 | 36 | 0d |  |  |
| 38 | 1.3.2.2 | **Add/Edit Alert form** | 6d | 2011-11-03 | 2011-11-10 | 35 | 0d |  |  |
| 39 | 1.3.2.2.1 | Properties tab | 1d | 2011-11-03 | 2011-11-03 |  | 0d |  |  |
| 40 | 1.3.2.2.2 | Settings tab | 2d | 2011-11-04 | 2011-11-07 | 39 | 0d |  |  |
| 41 | 1.3.2.2.3 | Assign rule tab | 3d | 2011-11-08 | 2011-11-10 | 40 | 0d |  |  |
| 42 | 1.3.2.3 | **Alert report View** | 4d | 2011-11-11 | 2011-11-16 | 38 | 0d |  |  |
| 43 | 1.3.2.3.1 | Alert report GUI | 2d | 2011-11-11 | 2011-11-14 |  | 0d |  |  |
| 44 | 1.3.2.3.2 | Alert report filter | 2d | 2011-11-15 | 2011-11-16 | 43 | 0d |  |  |
| 45 | 1.3.2.4 | Update exist reports | 2d | 2011-11-17 | 2011-11-18 | 42 | 0d |  |  |
| 46 | 1.3.2.5 | Email options | 1d | 2011-11-21 | 2011-11-21 | 45 | 0d |  |  |
| 47 | 1.3.2.6 | **Model** | 13d | 2011-11-22 | 2011-12-08 | 46 | 0d |  |  |
| 48 | 1.3.2.6.1 | Add/Edit/Delete alert model | 3d | 2011-11-22 | 2011-11-24 |  | 0d |  |  |
| 49 | 1.3.2.6.2 | Alert report model | 3d | 2011-11-25 | 2011-11-29 | 48 | 0d |  |  |
| 50 | 1.3.2.6.3 | New RPC calls | 2d | 2011-11-30 | 2011-12-01 | 49 | 0d |  |  |
| 51 | 1.3.2.6.4 | Use new calls | 1d | 2011-12-02 | 2011-12-02 | 50 | 0d |  |  |
| 52 | 1.3.2.6.5 | Email options model | 1d | 2011-12-05 | 2011-12-05 | 51 | 0d |  |  |
| 53 | 1.3.2.6.6 | Alert report to snapshot | 3d | 2011-12-06 | 2011-12-08 | 52 | 0d |  |  |

Notes:
- 27: I going to create new stored procedures for Add/Edit/Delete alerts here
- 28: Here I'll ad procedures for new reports
- 29: New procedures for settings will be added here
- 30: Here I going to add logging to audit report
- 32: Here I'll add creation of new tables in the database on update
- 33: New security permissions will be added here
- 36: Here I going to create Alert node. GUI, it's logic, add it to CaptainConstructor
- 37: Here I going to create Model node and it's logic. It will be added to CaptainConstructor too
- 39: Here I want to create Properties tab for the alert node
- 40: The settings tab for alert node will be created here
- 41: Assign rule tab will be implemented here
- 43: Here I going to implement GUI for the alert report
- 44: We need this filter to convert data from GUI to structs for model
- 45: Here I going to add checkBoxes and logic to exist reports
- 46: I going to impement options for Email (login, password, server, etc)
- 48: We need this model to make calls to the Server
- 49: Here I going to implement model for the alert report
- 50: New RPC calls for this feature will be created here
- 51: Here I going to use new calls in my model
- 52: Here I doing to implement modal for the email settings
- 53: Here I going to create logic to move from one report to another

| ID | WBS | Task | Duration | Start | Finish | Predecessors | Complete | Remaining | Total slack | Free slack | Resources | Work | Actual work |
| --- | --- | --- | --- | --- | --- | --- | --- | --- | --- | --- | --- | --- | --- |
| 54 | 1.3.2.7 | **Sound** | 4d | 2011-12-09 | 2011-12-14 | 47 |  |  | 0d |  |  |  |  |
| 55 | 1.3.2.7.1 | Find components for sound playing | 2d | 2011-12-09 | 2011-12-12 |  |  |  | 0d |  |  |  |  |
| 56 | 1.3.2.7.2 | Use new component in the Captain | 2d | 2011-12-13 | 2011-12-14 | 55 |  |  | 0d |  |  |  |  |
| 57 | 1.3.2.8 | **Tray notification** | 6d | 2011-12-15 | 2011-12-22 | 54 |  |  | 0d |  |  |  |  |
| 58 | 1.3.2.8.1 | Find components for tray | 2d | 2011-12-15 | 2011-12-16 |  |  |  | 0d |  |  |  |  |
| 59 | 1.3.2.8.2 | Use new component in the Captain | 2d | 2011-12-19 | 2011-12-20 | 58 |  |  | 0d |  |  |  |  |
| 60 | 1.3.2.8.3 | Disable/enable sound | 1d | 2011-12-21 | 2011-12-21 | 59 |  |  | 0d |  |  |  |  |
| 61 | 1.3.2.8.4 | Disable/enable notification | 1d | 2011-12-22 | 2011-12-22 | 60 |  |  | 0d |  |  |  |  |
| 62 | 1.3.2.9 | **Security** | 4d | 2011-12-23 | 2011-12-28 | 57 |  |  | 0d |  |  |  |  |
| 63 | 1.3.2.9.1 | Add new permissions | 1d | 2011-12-23 | 2011-12-23 |  |  |  | 0d |  |  |  |  |
| 64 | 1.3.2.9.2 | Add permission check | 3d | 2011-12-26 | 2011-12-28 | 63 |  |  | 0d |  |  |  |  |
| 65 | 1.3.2.10 | **Gui manager** | 5d | 2011-12-29 | 2012-01-04 | 62 |  |  | 0d |  |  |  |  |
| 66 | 1.3.2.10.1 | Timer which calls server | 2d | 2011-12-29 | 2011-12-30 |  |  |  | 0d |  |  |  |  |
| 67 | 1.3.2.10.2 | Message parser | 2d | 2012-01-02 | 2012-01-03 | 66 |  |  | 0d |  |  |  |  |
| 68 | 1.3.2.10.3 | Tray and sonnd manager | 1d | 2012-01-04 | 2012-01-04 | 67 |  |  | 0d |  |  |  |  |
| 69 | 1.3.3 | **Agent** | 45d | 2011-10-04 A | 2011-12-05 |  | 16% | 38.01d | 4d | 0d | Alex | 360h | 55.92h |
| 70 | 1.3.3.1 | **Filter data format** | 9d | 2011-10-04 A | 2011-10-14 |  | 78% | 2.01d | 4d | 0d |  |  |  |
| 71 | 1.3.3.1.1 | DBLib Lib | 3d | 2011-10-04 A | 2011-10-06 A |  | 100% |  |  |  |  |  |  |
| 72 | 1.3.3.1.2 | AgentFilters Lib | 3d | 2011-10-07 A | 2011-10-11 A | 71 | 100% |  |  |  |  |  |  |
| 73 | 1.3.3.1.3 | Test/Debug | 3d | 2011-10-12 A | 2011-10-14 | 72 | 33% | 2.01d | 4d |  |  |  |  |
| 74 | 1.3.3.2 | **Filter execution** | 10d | 2011-10-17 | 2011-10-28 | 70 |  |  | 4d | 0d |  |  |  |
| 75 | 1.3.3.2.1 | **CAlertInfo** | 5d | 2011-10-17 | 2011-10-21 |  |  |  | 4d | 0d |  |  |  |
| 76 | 1.3.3.2.1.1 | On_rule dispatcher | 3d | 2011-10-17 | 2011-10-19 |  |  |  | 4d | 0d |  |  |  |
| 77 | 1.3.3.2.1.2 | ReloadFilters | 2d | 2011-10-20 | 2011-10-21 | 76 |  |  | 4d |  |  |  |  |
| 78 | 1.3.3.2.2 | AgentFilters Lib | 2d | 2011-10-24 | 2011-10-25 | 75 |  |  | 4d | 0d |  |  |  |
| 79 | 1.3.3.2.3 | Debug/Test | 3d | 2011-10-26 | 2011-10-28 | 78 |  |  | 4d |  |  |  |  |

Notes:
- 55: Here I need to find a free usable control to play sound or write my own
- 56: Here I going to use it
- 58: We need component for the tray messages, so I going to find it here
- 59: Here I going to use it
- 60: Add possibility to turn off sound
- 61: Add possibility to turn off tray notification
- 63: Here I going to add permission for the sound and tray notification
- 64: Here I'll add check of permissions
- 66: This class will make calls to the server and get alerts
- 67: This class converts list of alerts to string for tooltips
- 68: This class will make calls to tray control and sound control
- 71: create DB dummy stub functionality of retrieving the fake AlertInfo / (until real functions will be implemented) / FilterMSSQLImpl2::GetAgentFilter - change impl, to retrieve rule AND alert data from db, and pass data to AgentFilterManger lib functional / CSqlFilterBuilder - add members, to support alert info storing / and data transferring to agentfilters.lib
- 72: implement alert info storing, behind the legacy data / overall struct : / 1*RulesPackHeader / n*PositiveRule / optional data header(type = AlertPackInfo) / n*AlertInfo / struct PositiveRuleInfo / int m_iLifeTime; / int m_iAlertLevel; // - change to AlertId/ ; / AlertInfo struct / int ID / int ReactionTypeSet / int SnapshotFeatureSet
- 73: raise vm, rebuild libraries, install p2ee, prepare environment, validate new data recieving and storing on agent side using remote debug techniques
- 74: implement new filter data execution
- 75: create entity, to cache all alert struct info, with ability of quick resolving alert info from rule id
- 76: use Filter_Complete routine(as example) to create on_rule dispatcher, to gather rule-alert bound info
- 77: modify ReloadFilters routine, and implement alert info gathering and storing in the CAlertInfoClass
- 78: Update CFilterManger class, ExecuteUserFilter func, and all subsequent filtering functionality to return alert info in FilterResult. / Fix all usage of ExecuteUserFilter func

| ID | WBS | Task | Duration | Start | Finish | Predecessors | Total slack | Free slack | Resources | Work |
| --- | --- | --- | --- | --- | --- | --- | --- | --- | --- | --- |
| 80 | 1.3.3.3 | **Alert packet** | 26d | 2011-10-31 | 2011-12-05 | 74 | 4d |  |  |  |
| 81 | 1.3.3.3.1 | **Core dispatching** | 15d | 2011-10-31 | 2011-11-18 |  | 4d | 0d |  |  |
| 82 | 1.3.3.3.1.1 | Alert package queue | 2d | 2011-10-31 | 2011-11-01 |  | 4d | 0d |  |  |
| 83 | 1.3.3.3.1.2 | **Alert Queue Filling** | 8d | 2011-11-02 | 2011-11-11 | 82 | 4d | 0d |  |  |
| 84 | 1.3.3.3.1.2.1 | AddMonitoringEntry | 2d | 2011-11-02 | 2011-11-03 |  | 4d | 0d |  |  |
| 85 | 1.3.3.3.1.2.2 | CFileMonManager | 3d | 2011-11-04 | 2011-11-08 | 84 | 4d | 0d |  |  |
| 86 | 1.3.3.3.1.2.3 | CRegMonManager | 3d | 2011-11-09 | 2011-11-11 | 85 | 4d |  |  |  |
| 87 | 1.3.3.3.1.3 | Alert package queue IOCTRLS | 2d | 2011-11-14 | 2011-11-15 | 83 | 4d | 0d |  |  |
| 88 | 1.3.3.3.1.4 | Debug/Testing | 3d | 2011-11-16 | 2011-11-18 | 87 | 4d |  |  |  |
| 89 | 1.3.3.3.2 | **User-Mode dispatching** | 11d | 2011-11-21 | 2011-12-05 | 81 | 4d |  |  |  |
| 90 | 1.3.3.3.2.1 | **CAlertManager** | 11d | 2011-11-21 | 2011-12-05 |  | 4d |  |  |  |
| 91 | 1.3.3.3.2.1.1 | alert packet Dispatcher | 2d | 2011-11-21 | 2011-11-22 |  | 4d | 0d |  |  |
| 92 | 1.3.3.3.2.1.2 | CSnapshotComponent | 2d | 2011-11-23 | 2011-11-24 | 91 | 4d | 0d |  |  |
| 93 | 1.3.3.3.2.1.3 | Snapshot generation | 2d | 2011-11-25 | 2011-11-28 | 92 | 4d | 0d |  |  |
| 94 | 1.3.3.3.2.1.4 | Test/Debug | 5d | 2011-11-29 | 2011-12-05 | 93 | 4d |  |  |  |
| 95 | 1.3.4 | **Server** | 18d | 2011-12-06 | 2011-12-29 | 69 | 4d |  | Alex | 144h |
| 96 | 1.3.4.1 | **Emailing** | 18d | 2011-12-06 | 2011-12-29 |  | 4d |  |  |  |
| 97 | 1.3.4.1.1 | CURL mail integration | 3d | 2011-12-06 | 2011-12-08 |  | 4d | 0d |  |  |
| 98 | 1.3.4.1.2 | mail dispatcher | 5d | 2011-12-09 | 2011-12-15 | 97 | 4d | 0d |  |  |
| 99 | 1.3.4.1.3 | Debug/testing | 10d | 2011-12-16 | 2011-12-29 | 98 | 4d |  |  |  |
| 100 | 1.4 | Developer's testing | 5d | 2012-01-05 | 2012-01-11 | 22 | 0d |  | Alex; Shevys | 80h |
| 101 | 1.5 | Merge | 2w | 2012-01-12 | 2012-01-25 | 100 | 0d |  | Alex; Shevys | 160h |
| 102 | 1.6 | Review | 2d | 2012-01-26 | 2012-01-27 | 101 | 0d |  | Developers | 16h |
| 103 | 1.7 | Bugfix | 17d | 2012-01-30 | 2012-02-21 | 102 | 0d |  | Alex; Shevys | 272h |

Notes:
- 82: Create new core alert queue, for alert packet. / Expand DeviceExtension struct with new PACKAGE_QUEUE value / Add AlertPackageQueue initialization in driverEntry / CFileMonManager - agFileMonitoringManager.cpp - ExecuteFileFilter/ CRegMonmanager - agRegMonitoringManager.cpp - AddZwOpenKey,AddZwCreateKey, AddZwQueryValueKey, ExecuteUserFilter / add alert packet construction, and alert queue pushing
- 84: modify all AddZwXXX routines with 1 extended param - alert info struct / provide param passing up to CStorage::storeRequest
- 85: modify all addzw* routines
- 86: modify all addzwxxx routines, and bounded functional
- 87: P2ECORE_GET_PACKAGE_QUEUE_INFO : / update P2ECORE_GET_PACKAGE_QUEUE_INFO / to return additional alert queue info / test for valid value / *** / P2ECORE_GET_PACKAGE_ALERT / create set of new ioctrl, that flushes the alert queue to the user-mode disaptch thread
- 90: create entity, that owns dispatch thread, porcess every alert packet, creates needed snapshot and sends data to the server->db
- 91: create entity, that owns dispatch thread. This thread runs every const interval and gather core alert query of packets
- 92: implement func / CreateOrUpdateSnapshot - support of sequental calls for one snapshot, add snapshot data parts to overall snapshot.
- 93: imlement dispatching of alert packet batch - initial snapshot creation and sequental update for every alert packet from batch
- 94: build needed p2ee components, and test alert packet core raising and transferring(to user-mode and to db)
- 97: add curl mail support to server
- 98: add mail dispatcher, that querys the db, and sends emails for all appropriate alerts
- 101: We will implement this feature in the branch so we need to merge it

| ID | WBS | Task | Duration | Start | Finish | Predecessors | Total slack | Free slack | Resources | Work |
| --- | --- | --- | --- | --- | --- | --- | --- | --- | --- | --- |
| 104 | 1.8 | **Testing** | 16.56d | 2012-01-30 | 2012-02-21 | 102 | 4.62d |  | Tester | 132.5h |
| 105 | 1.8.1 | First Acceptance testing - version is valid | 2h | 2012-01-30 | 2012-01-30 | 102, 22 | 4.62d | 0d |  |  |
| 106 | 1.8.2 | Functionality testing | 25h | 2012-01-30 | 2012-02-02 | 105 | 4.62d | 0d |  |  |
| 107 | 1.8.3 | Retesting | 5.5h | 2012-02-02 | 2012-02-03 | 106 | 4.62d | 0d |  |  |
| 108 | 1.8.4 | Regression testing | 16h | 2012-02-03 | 2012-02-07 | 107 | 4.62d | 0d |  |  |
| 109 | 1.8.5 | Snapshots regression testing | 7h | 2012-02-07 | 2012-02-07 | 108 | 4.62d | 0d |  |  |
| 110 | 1.8.6 | Database cleanup regression testing | 9h | 2012-02-07 | 2012-02-09 | 109 | 4.62d | 0d |  |  |
| 111 | 1.8.7 | File monitoring regression testing | 10.5h | 2012-02-09 | 2012-02-10 | 110 | 4.62d | 0d |  |  |
| 112 | 1.8.8 | Registry monitoring regression testing | 7h | 2012-02-10 | 2012-02-13 | 111 | 4.62d | 0d |  |  |
| 113 | 1.8.9 | Monitoring regression testing | 8h | 2012-02-13 | 2012-02-14 | 112 | 4.62d | 0d |  |  |
| 114 | 1.8.10 | Tracking regression testing | 3h | 2012-02-14 | 2012-02-14 | 113 | 4.62d | 0d |  |  |
| 115 | 1.8.11 | Security management regression testing | 6.5h | 2012-02-14 | 2012-02-15 | 114 | 4.62d | 0d |  |  |
| 116 | 1.8.12 | SRE regression testing | 2h | 2012-02-15 | 2012-02-15 | 115 | 4.62d | 0d |  |  |
| 117 | 1.8.13 | Audit report regression testing | 7.5h | 2012-02-15 | 2012-02-16 | 116 | 4.62d | 0d |  |  |
| 118 | 1.8.14 | Filters regression testing | 2h | 2012-02-16 | 2012-02-16 | 117 | 4.62d | 0d |  |  |
| 119 | 1.8.15 | Statistics regression testing | 14h | 2012-02-16 | 2012-02-20 | 118 | 4.62d | 0d |  |  |
| 120 | 1.8.16 | Captain installation regression testing | 1.5h | 2012-02-20 | 2012-02-20 | 119 | 4.62d | 0d |  |  |
| 121 | 1.8.17 | Update database | 6h | 2012-02-20 | 2012-02-21 | 120 | 4.62d | 0.44d |  |  |
| 122 | 1.9 | **Risks** | 10d | 2012-02-22 | 2012-03-06 | 103 | 0d |  |  | 206.5h |
| 123 | 1.9.1 | Development | 10d | 2012-02-22 | 2012-03-06 |  | 0d |  | Alex; Shevys | 160h |
| 124 | 1.9.2 | **Testing** | 5.81d | 2012-02-22 | 2012-02-29 |  | 4.19d |  | Tester | 46.5h |
| 125 | 1.9.2.1 | First testing (acceptance) - version is invalid | 2h | 2012-02-22 | 2012-02-22 | 121 | 4.19d | 0d |  |  |
| 126 | 1.9.2.2 | Second testing (acceptance) - version is invalid | 2h | 2012-02-22 | 2012-02-22 | 125 | 4.19d | 0d |  |  |
| 127 | 1.9.2.3 | Bugs reproducin and tickets posting | 4.5h | 2012-02-22 | 2012-02-23 | 126 | 4.19d | 0d |  |  |
| 128 | 1.9.2.4 | Second retesting and regression testing | 20h | 2012-02-23 | 2012-02-27 | 127 | 4.19d | 0d |  |  |
| 129 | 1.9.2.5 | Third retesting and regression testing | 18h | 2012-02-27 | 2012-02-29 | 128 | 4.19d |  |  |  |

Notes:
- 104: QA testing
- 105: Check that version is ready for further testing, i.e. Install and try to create and work with alerts. If it is ok we will continue
- 107: installing version - 2 hours / checking 25 tickets * 7 minutes = about 3 hours / + report - 0.5
- 109: Full regression testing + new tests for changes
- 110: full regression testing
- 111: Full regression testing
- 112: Full regression testing
- 113: Smoke testing for: / Chat monitoring / Network traffick monitoring / Login-logout monitoring / Process monitoring
- 114: Smoke testing
- 115: Smoke testing
- 116: smoke testing
- 117: smoke testing
- 118: smoke regression testing
- 119: smoke testing
- 120: smoke testing
- 121: Check update with 1.2.7 and 1.3 versions
- 127: 15 tickets (light) - 5 min per ticket - 1.5 hours / 3 tickets (hard) - 1 hour per ticket - 3 hours
- 128: half of tickets - 4 hours / regression is the same - 16 hours
